# P2131 - Implementación - Mejoras y crecimiento mediador móvil - 20150512

Schedule from MS Project, 2015-07-07 to 2015-08-13, A marks actual dates.

## Calendars

- CalendarioVTR: Mon-Fri 09:00-13:00, 15:00-19:00; Sat-Sun off. Exceptions (off unless hours are given): 2011-01-01 to 2020-01-01 (Año Nuevo, recurring), 2011-05-01 to 2020-05-01 (Dia del Trabajo, recurring), 2011-05-21 to 2020-05-21 (Dia de las Glorias Navales, recurring), 2011-08-15 to 2020-08-15 (Asunción de La Vrigen, recurring), 2011-09-18 to 2020-09-18 (Independencia Nacional, recurring), 2011-09-19 to 2020-09-19 (Dia de las Glorias del Ejercito, recurring), 2011-11-01 to 2020-11-01 (Dia de Todos los Santos, recurring), 2011-12-08 to 2020-12-08 (Inmaculada Concepción, recurring), 2011-12-25 to 2020-12-25 (Navidad, recurring).

## Resources

| Resource |
| --- |
| VTR |
| ACTT - VTR |
| ACTT |

## Schedule

| ID | WBS | Task | Type | Duration | Start | Finish | Predecessors | Complete | Remaining | Baseline start | Baseline finish | Baseline duration | Total slack | Free slack | Constraint |
| --- | --- | --- | --- | --- | --- | --- | --- | --- | --- | --- | --- | --- | --- | --- | --- |
| 1 | 1 | **Mejoras y crecimiento mediador móvil** |  | 27.75d | 2015-07-07 A | 2015-08-13 |  | 34% | 18.4d | 2014-04-25 | 2014-11-28 | 149d | 0d |  |  |
| 2 | 1.1 | **Coordinacion Interna** |  | 5.75d | 2015-07-07 A | 2015-07-14 |  | 97% | 0.17d |  |  |  | 22d |  |  |
| 3 | 1.1.1 | Requerimientos Funcionales - LBR |  | 5d | 2015-07-07 A | 2015-07-13 A |  | 100% |  |  |  |  |  |  | finish no earlier than 2015-07-13 |
| 4 | 1.1.2 | Validacion Ambientes Desarrollo y QA |  | 3d | 2015-07-08 A | 2015-07-10 A |  | 100% |  |  |  |  |  |  | finish no earlier than 2015-07-10 |
| 5 | 1.1.3 | Generacion Datagramas Prototipos |  | 1.9d | 2015-07-13 A | 2015-07-14 | 4 | 84% | 0.3d |  |  |  | 22d |  |  |
| 6 | 1.2 | **Documentacion Proyecto** |  | 13d | 2015-07-09 A | 2015-07-27 |  | 81% | 2.53d | 2014-06-05 | 2014-06-24 | 14d | 12.75d |  |  |
| 7 | 1.2.1 | Diseño Detallado |  | 11d | 2015-07-09 A | 2015-07-23 |  | 90% | 1.1d |  |  |  | 14d | 1d | finish no earlier than 2015-07-23 |
| 8 | 1.2.2 | Plan de Prueba |  | 3d | 2015-07-13 A | 2015-07-15 |  | 90% | 0.3d | 2014-06-05 | 2014-06-09 | 3d | 19.7d | 0d | finish no earlier than 2015-07-15 |
| 9 | 1.2.3 | Listado de Casos de Prueba |  | 3d | 2015-07-16 A | 2015-07-20 | 8 | 90% | 0.3d | 2014-06-18 | 2014-06-20 | 3d | 17d | 4d |  |
| 10 | 1.2.4 | Checklist de Calidad |  | 1d | 2015-07-27 | 2015-07-27 | 7, 8, 9 |  |  |  |  |  | 13d | 0d | finish no earlier than 2015-07-27 |
| 11 | 1.2.5 | Maestro de Componente |  | 1d | 2015-07-27 | 2015-07-27 | 24 |  |  | 2014-06-23 | 2014-06-23 | 1d | 13d |  |  |
| 12 | 1.2.6 | Revisíon Documentacion | milestone | 0d | 2015-07-27 | 2015-07-27 | 10 |  |  | 2014-06-24 | 2014-06-24 | 1d | 13d |  |  |
| 13 | 1.3 | **Desarrollo** |  | 13d | 2015-07-09 | 2015-07-27 |  |  |  | 2014-06-25 | 2014-07-24 | 21d | 13d |  |  |
| 14 | 1.3.1 | **Despliegue del Número de Fono en Hoja AN0** |  | 2d | 2015-07-09 | 2015-07-10 |  |  |  |  |  |  | 13d |  |  |
| 15 | 1.3.1.1 | Desarrollo - Fono en Hoja CUT |  | 2d | 2015-07-09 | 2015-07-10 |  |  |  |  |  |  | 13d | 0d | finish no earlier than 2015-07-10 |
| 16 | 1.3.1.2 | Pruebas Unitarias |  | 1d | 2015-07-10 | 2015-07-10 |  |  |  |  |  |  | 24d |  | finish no earlier than 2015-07-10 |
| 17 | 1.3.2 | **Despliegue del Número de Fono en Hoja AN1** |  | 8d | 2015-07-13 | 2015-07-22 |  |  |  |  |  |  | 13d |  |  |
| 18 | 1.3.2.1 | Desarrollo - Detalle de Fono - REQ 2 |  | 2d | 2015-07-13 | 2015-07-14 | 15 |  |  |  |  |  | 13d | 0d | finish no earlier than 2015-07-14 |
| 19 | 1.3.2.2 | Desarrollo - Tabla de Bloqueo - REQ 3 |  | 2d | 2015-07-15 | 2015-07-16 | 18 |  |  |  |  |  | 13d | 0d | finish no earlier than 2015-07-16 |
| 20 | 1.3.2.3 | Desarrollo - Tabla de Planes - REQ 4 |  | 2d | 2015-07-17 | 2015-07-20 | 19 |  |  |  |  |  | 13d | 0d | finish no earlier than 2015-07-20 |
| 21 | 1.3.2.4 | Desarrollo - Tabla de Título de Descuentos Subtel - REQ 5 |  | 2d | 2015-07-21 | 2015-07-22 | 20 |  |  |  |  |  | 13d | 0d | finish no earlier than 2015-07-22 |
| 22 | 1.3.2.5 | Pruebas Unitarias |  | 7d | 2015-07-14 | 2015-07-22 |  |  |  |  |  |  | 16d |  | finish no earlier than 2015-07-22 |
| 23 | 1.3.3 | **Despliegue del Número de Fono en Hoja AN2** |  | 3d | 2015-07-23 | 2015-07-27 |  |  |  |  |  |  | 13d |  |  |
| 24 | 1.3.3.1 | Desarrollo - Detalle de Llamadas - REQ 6 |  | 2d | 2015-07-23 | 2015-07-24 | 21 |  |  |  |  |  | 13d | 0d | finish no earlier than 2015-07-24 |
| 25 | 1.3.3.2 | Pruebas Unitarias |  | 2d | 2015-07-24 | 2015-07-27 |  |  |  |  |  |  | 13d |  | finish no earlier than 2015-07-27 |
| 26 | 1.3.4 | Prueba integral |  | 2d | 2015-07-24 | 2015-07-27 |  |  |  |  |  |  | 8d | 0.12d | finish no earlier than 2015-07-27 |

| ID | WBS | Task | Duration | Start | Finish | Predecessors | Baseline start | Baseline finish | Baseline duration | Total slack | Free slack | Constraint |
| --- | --- | --- | --- | --- | --- | --- | --- | --- | --- | --- | --- | --- |
| 27 | 1.4 | **Certificación QA** | 13d | 2015-07-16 | 2015-08-04 |  | 2014-09-01 | 2014-09-23 | 15d | 7.88d |  |  |
| 28 | 1.4.1 | Gestion de Obtencion OK (Arquitectura, GSA, Capacitacion, Usuario) | 3d | 2015-07-16 | 2015-07-21 |  | 2014-09-10 | 2014-09-10 | 1d | 17.88d |  | start no earlier than 2015-07-16 |
| 29 | 1.4.2 | Primera Entrega Documentacion | 1d | 2015-07-20 | 2015-07-20 |  |  |  |  | 12d | 4.12d | finish no earlier than 2015-07-20 |
| 30 | 1.4.3 | Segunda Entrega Documentacion | 1d | 2015-07-27 | 2015-07-28 | 29 | 2014-09-12 | 2014-09-22 | 5d | 7.88d | 0d | start no earlier than 2015-07-27 |
| 31 | 1.4.4 | Pruebas de Certificacion QA | 5d | 2015-07-28 | 2015-08-04 | 30, 26 |  |  |  | 7.88d |  |  |
| 32 | 1.4.5 | Hito: Informe de Certificación | 2d | 2015-07-31 | 2015-08-03 |  | 2014-09-23 | 2014-09-23 | 1d | 8d |  | finish no earlier than 2015-08-03 |
| 33 | 1.5 | **Paso a Explotación** | 7.75d | 2015-08-04 | 2015-08-13 |  | 2014-09-24 | 2014-10-10 | 13d | 0d |  |  |
| 34 | 1.5.1 | Gestion de Obtencion OK (Arquitectura, GSA, Capacitacion, Usuario) | 4d | 2015-08-04 | 2015-08-07 |  | 2014-09-24 | 2014-09-24 | 1d | 4d |  | finish no earlier than 2015-08-07 |
| 35 | 1.5.2 | SIN | 2d | 2015-08-07 | 2015-08-10 |  | 2014-10-01 | 2014-10-02 | 2d | 0d |  | finish no earlier than 2015-08-10 |
| 36 | 1.5.3 | Mesa de Cambios | 1d | 2015-08-11 | 2015-08-11 | 35 | 2014-10-07 | 2014-10-07 | 1d | 0d |  |  |
| 37 | 1.5.4 | Paso a Explotación | 1d | 2015-08-12 | 2015-08-12 | 36 | 2014-10-08 | 2014-10-08 | 1d | 0d |  |  |
| 38 | 1.5.5 | Hito: Cierre Proyecto | 1d | 2015-08-13 | 2015-08-13 | 37 |  |  |  | 0d |  |  |

Notes:
- 29: Solicitar fecha intermedia (Segunda entrega de la primera entrega)
